# AudioSynth

Schedule from GanttProject, 2012-10-24 to 2012-12-02.
Womprats

## Calendars

- Project calendar: Mon-Sun working.

## Resources

| Resource |
| --- |
| Jackson |
| Bradon |
| Kevin |
| Andy |

## Schedule

| ID | Task | Duration | Start | Finish | Predecessors | Resources |
| --- | --- | --- | --- | --- | --- | --- |
| 1 | Layout Complete | 7d | 2012-11-05 | 2012-11-11 | 3, 5, 6 |  |
| 2 | CAM Files Sent to Sunstone | 3d | 2012-11-12 | 2012-11-14 | 1 |  |
| 3 | Verify Audio Amp Works | 2d | 2012-11-03 | 2012-11-04 | 4 |  |
| 4 | Layout and Fab audio amp circuit | 10d | 2012-10-24 | 2012-11-02 |  | Jackson; Bradon |
| 5 | Verify LCD Backlight Design | 12d | 2012-10-24 | 2012-11-04 |  | Kevin |
| 6 | Schematic Design Review | 4d | 2012-10-24 | 2012-10-27 |  | Andy |
| 7 | Bring Up Board | 6d | 2012-11-15 | 2012-11-20 | 2 |  |
| 8 | Software Written | 27d | 2012-11-05 | 2012-12-01 | 3, 5 |  |
| 9 | Project Done | 1d | 2012-12-02 | 2012-12-02 | 7, 8 |  |
